# FLEV-modello a cascata - V1.1

Schedule from MS Project, 2018-10-05 to 2019-06-07, costs in €.

## Calendars

- Standard: Mon-Fri 08:00-12:00, 13:00-17:00; Sat-Sun off.

## Resources

| Resource | Rate |
| --- | --- |
| Analista Occupato | 30 |
| Analista Programmatore | 30 |
| Programmatore 1 | 30 |
| Programmatore 2 | 30 |
| Programmatore Esperto Workflow | 50 |
| Project Manager | 30 |

## Schedule

| ID | WBS | Task | Duration | Start | Finish | Predecessors | Total slack | Resources | Work | Cost |
| --- | --- | --- | --- | --- | --- | --- | --- | --- | --- | --- |
| 1 | 1 | **FLEV- Modello cascata** | 176d | 2018-10-05 | 2019-06-07 |  | 0d |  | 2889.31h | 91,543.4 |
| 2 | 1.1 | Project Management | 176d | 2018-10-05 | 2019-06-07 |  | 0d | Project Manager [20%] | 281.6h | 8,448 |
| 3 | 1.2 | **Progetto** | 176d | 2018-10-05 | 2019-06-07 |  | 0d |  | 2607.71h | 83,095.4 |
| 4 | 1.1 | Inizio | 1d | 2018-10-05 | 2018-10-05 |  | 0d | Analista Occupato [20%]; Analista Programmatore [20%]; Programmatore 1 [20%]; Programmatore 2 [20%]; Programmatore Esperto Workflow [20%]; Project Manager [20%] | 9.6h | 320 |
| 5 | 1.2 | **Intervista utenti** | 11d | 2018-10-08 | 2018-10-22 | 4 | 0d |  | 69.17h | 2,075 |
| 6 | 1.2.1 | Intervista 1 | 2d | 2018-10-08 | 2018-10-09 | 4 | 0d | Analista Programmatore | 16h | 480 |
| 7 | 1.2.2 | Intervista 2 | 2d | 2018-10-10 | 2018-10-11 | 6 | 0d | Analista Occupato [33%] | 5.27h | 158 |
| 8 | 1.2.3 | Intervista 3 | 2d | 2018-10-12 | 2018-10-15 | 7 | 0d | Analista Programmatore | 16h | 480 |
| 9 | 1.2.4 | Intervista 4 | 2d | 2018-10-16 | 2018-10-17 | 8 | 0d | Analista Occupato [33%] | 5.27h | 158 |
| 10 | 1.2.5 | Intervista 5 | 2d | 2018-10-18 | 2018-10-19 | 9 | 0d | Analista Programmatore | 16h | 480 |
| 11 | 1.2.6 | Intervista parte 2 | 1d | 2018-10-22 | 2018-10-22 | 6, 7, 8, 9, 10 | 0d | Analista Occupato [33%]; Analista Programmatore | 10.63h | 319 |
| 12 | 1.3 | **Analisi** | 21d | 2018-10-23 | 2018-11-20 | 11 | 0d |  | 223.44h | 6,703.2 |
| 13 | 1.3.1 | Verifica requisiti | 5d | 2018-10-23 | 2018-10-29 | 11 | 0d | Analista Occupato [33%]; Analista Programmatore | 53.2h | 1,596 |
| 14 | 1.3.2 | Produzione analisi | 15d | 2018-10-30 | 2018-11-19 | 13 | 0d | Analista Occupato [33%]; Analista Programmatore | 159.6h | 4,788 |
| 15 | 1.3.3 | Analisi (requisiti) | 1d | 2018-11-20 | 2018-11-20 | 14 | 0d | Analista Occupato [33%]; Analista Programmatore | 10.64h | 319.2 |
| 16 | 1.4 | **Progettazione** | 21d | 2018-11-21 | 2018-12-19 | 15 | 0d |  | 548h | 18,120 |
| 17 | 1.4.1 | Progettazione architetturale | 10d | 2018-11-21 | 2018-12-04 | 15 | 0d | Analista Programmatore; Programmatore 1; Programmatore 2; Programmatore Esperto Workflow [50%] | 280h | 9,200 |
| 18 | 1.4.2 | Progettazione di dettaglio | 10d | 2018-12-05 | 2018-12-18 | 17 | 0d | Programmatore 1; Programmatore Esperto Workflow [50%] | 120h | 4,400 |
| 19 | 1.4.3 | Progettazione test | 10d | 2018-12-05 | 2018-12-18 | 17 | 0d | Analista Programmatore [50%]; Programmatore 2 | 120h | 3,600 |
| 20 | 1.4.4 | Progettazione (specifiche) | 1d | 2018-12-19 | 2018-12-19 | 17, 18, 19 | 0d | Analista Programmatore; Programmatore 1; Programmatore 2; Programmatore Esperto Workflow [50%] | 28h | 920 |
| 21 | 1.5 | **Realizzazione** | 30d | 2018-12-20 | 2019-01-30 | 20 | 0d |  | 840h | 27,600 |
| 22 | 1.5.1 | Codifica | 30d | 2018-12-20 | 2019-01-30 | 20 | 0d | Analista Programmatore [50%]; Programmatore 1 [50%]; Programmatore 2 [50%]; Programmatore Esperto Workflow [25%] | 420h | 13,800 |
| 23 | 1.5.2 | Implementazione dei test | 30d | 2018-12-20 | 2019-01-30 | 20 | 0d | Analista Programmatore [50%]; Programmatore 1 [50%]; Programmatore 2 [50%]; Programmatore Esperto Workflow [25%] | 420h | 13,800 |
| 24 | 1.6 | Esecuzione verifica | 5d | 2019-01-31 | 2019-02-06 | 22, 23 | 0d | Analista Programmatore; Programmatore Esperto Workflow [50%] | 60h | 2,200 |
| 25 | 1.7 | Verifica | 1d | 2019-02-07 | 2019-02-07 | 24 | 0d | Analista Occupato [33%]; Analista Programmatore; Programmatore 1; Programmatore 2; Programmatore Esperto Workflow [50%] | 30.64h | 999.2 |

| ID | WBS | Task | Type | Duration | Start | Finish | Predecessors | Total slack | Resources | Work | Cost |
| --- | --- | --- | --- | --- | --- | --- | --- | --- | --- | --- | --- |
| 26 | 1.8 | **Collaudo** |  | 5d | 2019-02-08 | 2019-02-14 | 25 | 0d |  | 81.27h | 2,678 |
| 27 | 1.8.1 | Installazione |  | 3d | 2019-02-08 | 2019-02-12 |  | 0d | Programmatore 1; Programmatore 2; Programmatore Esperto Workflow [50%] | 60h | 2,040 |
| 28 | 1.8.2 | Collaudo con utente |  | 2d | 2019-02-13 | 2019-02-14 | 27 | 0d | Analista Occupato [33%]; Analista Programmatore | 21.27h | 638 |
| 29 | 1.9 | **Formazione utente** |  | 20d | 2019-02-15 | 2019-03-14 | 28 | 0d |  | 160h | 4,800 |
| 30 | 1.9.1 | Preparazione corsi |  | 10d | 2019-02-15 | 2019-02-28 | 28 | 0d | Analista Programmatore | 80h | 2,400 |
| 31 | 1.9.2 | Corsi utenti |  | 10d | 2019-03-01 | 2019-03-14 | 30 | 0d | Analista Programmatore | 80h | 2,400 |
| 32 | 1.2.10 | Avviamento |  | 60d | 2019-03-15 | 2019-06-06 | 31 | 0d | Analista Occupato [30%]; Analista Programmatore [30%]; Programmatore 1 [30%]; Programmatore 2 [30%] | 576h | 17,280 |
| 33 | 1.11 | Termine | milestone | 1d | 2019-06-07 | 2019-06-07 | 28, 31, 32 | 0d | Analista Occupato [20%]; Analista Programmatore [20%]; Programmatore 1 [20%]; Programmatore 2 [20%]; Programmatore Esperto Workflow [20%]; Project Manager [20%] | 9.6h | 320 |
